Schedule from MS Project, 2020-03-02 to 2020-09-14, costs in ¥.

## Calendars

- 标准: Mon-Fri 08:00-12:00, 13:00-17:00; Sat-Sun off.

## Resources

| Resource | Rate | Cost per use |
| --- | --- | --- |
| 开发设备 |  | 1000 |
| 前端开发工程师 | 40 |  |
| 后端开发工程师 | 50 |  |
| 测试工程师 | 40 |  |
| 数据库管理员 | 60 |  |
| 产品经理 | 50 |  |
| 用户界面设计师 | 40 |  |
| 用户研究员 | 40 |  |

## Schedule

| ID | WBS | Task | Duration | Start | Finish | Predecessors | Total slack | Free slack | Constraint | Deadline | Resources | Work | Cost | Baseline cost |
| --- | --- | --- | --- | --- | --- | --- | --- | --- | --- | --- | --- | --- | --- | --- |
| 1 | 1 | 确认甲方文件 | 10d | 2020-03-02 | 2020-03-13 |  | 0d |  | finish no later than 2020-03-15 | 2020-03-15 | 产品经理 | 80h | 4,000 | 3,000 |
| 2 | 2 | **项目原型设计** | 12d | 2020-03-16 | 2020-03-31 | 1 | 0d |  |  |  |  | 264h | 27,960 | 40,000 |
| 3 | 2.1 | 用户界面初步设计 | 3d | 2020-03-16 | 2020-03-18 |  | 5d |  | start no earlier than 2020-03-16 |  | 前端开发工程师; 用户界面设计师; 开发设备 | 48h | 2,920 |  |
| 4 | 2.2 | 数据库初步设计 | 5d | 2020-03-16 | 2020-03-20 |  | 3d |  |  |  | 数据库管理员; 开发设备 | 40h | 3,400 |  |
| 5 | 2.3 | 后端基础功能开发 | 8d | 2020-03-16 | 2020-03-25 |  | 0d |  |  |  | 后端开发工程师; 开发设备 | 64h | 4,200 |  |
| 6 | 2.4 | 原型整合 | 2d | 2020-03-26 | 2020-03-27 | 3, 4, 5 | 0d |  |  |  | 后端开发工程师; 前端开发工程师; 数据库管理员; 开发设备 | 48h | 3,400 |  |
| 7 | 2.5 | 原型校对 | 2d | 2020-03-30 | 2020-03-31 | 6 | 0d |  |  |  | 测试工程师; 后端开发工程师; 前端开发工程师; 数据库管理员; 开发设备 | 64h | 4,040 |  |
| 8 | 3 | **项目整体开发** | 65d? | 2020-04-01 | 2020-06-30 | 2 | 0d |  | start no earlier than 2020-04-01 |  |  | 1643.2h | 142,720 | 150,000 |
| 9 | 3.1 | 第一次原型修改与需求细化 | 3d? | 2020-04-01 | 2020-04-03 |  | 0d |  | start no earlier than 2020-04-01 |  | 产品经理; 用户研究员 | 48h | 2,160 |  |
| 10 | 3.2 | 数据库系统开发 | 15d | 2020-04-06 | 2020-04-24 | 9 | 0d |  |  |  | 开发设备; 数据库管理员 | 120h | 8,200 |  |
| 11 | 3.3 | 界面设计方案细化 | 15d | 2020-04-06 | 2020-04-24 | 9 | 0d |  |  |  | 用户界面设计师; 开发设备 | 120h | 5,800 |  |
| 12 | 3.4 | 用户子系统实现 | 15d | 2020-04-06 | 2020-04-24 | 9 | 0d |  |  |  | 后端开发工程师 [50%]; 开发设备 | 60h | 4,000 |  |
| 13 | 3.5 | 数据存储子系统实现 | 15d | 2020-04-06 | 2020-04-24 | 9 | 0d |  |  |  | 后端开发工程师 [50%]; 开发设备 | 60h | 4,000 |  |
| 14 | 3.6 | 前端页面实现 | 15d | 2020-04-06 | 2020-04-24 | 9 | 0d |  |  |  | 开发设备; 前端开发工程师 | 120h | 5,800 |  |
| 15 | 3.7 | 界面设计方案v1.0 | 2d | 2020-04-27 | 2020-04-28 | 11 | 2d |  | finish no later than 2020-04-30 |  | 用户界面设计师 | 16h | 640 |  |
| 16 | 3.8 | 数据库设计文档v1.0 | 2d | 2020-04-27 | 2020-04-28 | 10 | 2d |  | finish no later than 2020-04-30 |  | 数据库管理员 [30%] | 4.8h | 288 |  |
| 17 | 3.9 | 原型整合校对 | 5d | 2020-04-27 | 2020-05-01 | 10, 11, 12, 13, 14 | 0d |  |  |  | 测试工程师; 后端开发工程师; 开发设备; 前端开发工程师; 数据库管理员 [70%] | 100h | 5,800 |  |
| 18 | 3.10 | 第二次原型修改与需求更正 | 3d | 2020-05-04 | 2020-05-06 | 17 | 0d |  |  |  | 产品经理; 用户研究员 | 48h | 2,160 |  |
| 19 | 3.11 | 数据库设计修正 | 5d | 2020-05-07 | 2020-05-13 | 18 | 13d | 0d |  |  | 数据库管理员; 开发设备 | 40h | 3,400 |  |
| 20 | 3.12 | 用户管理子系统实现 | 17d | 2020-05-07 | 2020-05-29 | 18 | 0d |  |  |  | 后端开发工程师 [50%]; 开发设备 | 68h | 4,400 |  |
| 21 | 3.13 | 界面设计修改 | 7d | 2020-05-07 | 2020-05-15 | 18 | 1d | 0d |  |  | 开发设备; 用户界面设计师 | 56h | 3,240 |  |
| 22 | 3.14 | 辅助系统实现 | 17d | 2020-05-07 | 2020-05-29 | 18 | 0d |  |  |  | 后端开发工程师 [50%]; 开发设备 | 68h | 4,400 |  |
| 23 | 3.15 | 前端页面实现 | 10d | 2020-05-18 | 2020-05-29 | 21 | 1d | 0d |  |  | 开发设备; 前端开发工程师 | 80h | 4,200 |  |
| 24 | 3.16 | 界面设计方案v1.1 | 3d | 2020-05-18 | 2020-05-20 | 21 | 29d |  |  |  | 用户界面设计师 | 24h | 960 |  |
| 25 | 3.17 | 数据库设计文档v1.1 | 3d | 2020-05-14 | 2020-05-18 | 19 | 31d |  |  |  | 数据库管理员 [30%] | 7.2h | 432 |  |
| 26 | 3.18 | 原型整合校对 | 5d | 2020-06-01 | 2020-06-05 | 19, 20, 21, 22, 23 | 1d | 0d |  |  | 测试工程师; 后端开发工程师 [30%]; 开发设备; 前端开发工程师; 数据库管理员 | 132h | 7,200 |  |
| 27 | 3.19 | 第三次原型修改与需求更正 | 3d | 2020-06-08 | 2020-06-10 | 26 | 1d | 0d |  |  | 产品经理 | 24h | 1,200 |  |
| 28 | 3.20 | 数据处理子系统实现 | 17d | 2020-06-01 | 2020-06-23 | 20, 22 | 0d |  | finish no earlier than 2020-06-03 |  | 后端开发工程师 [35%]; 开发设备 | 47.6h | 3,380 |  |
| 29 | 3.21 | 数据分析子系统实现 | 17d | 2020-06-01 | 2020-06-23 | 20, 22 | 0d |  | finish no earlier than 2020-06-03 |  | 后端开发工程师 [35%]; 开发设备 | 47.6h | 3,380 |  |
| 30 | 3.22 | 界面设计方案调整 | 3d | 2020-06-11 | 2020-06-15 | 27 | 1d | 0d |  |  | 开发设备; 用户界面设计师 | 24h | 1,960 |  |
| 31 | 3.23 | 前端页面实现 | 5d | 2020-06-16 | 2020-06-22 | 30 | 1d |  |  |  | 开发设备; 前端开发工程师 | 40h | 2,600 |  |
| 32 | 3.24 | 系统安全性检查与修正 | 10d | 2020-06-08 | 2020-06-19 | 26 | 7d |  |  |  | 测试工程师; 后端开发工程师 [30%] | 104h | 4,400 |  |
| 33 | 3.25 | α版本整合 | 3d? | 2020-06-24 | 2020-06-26 | 28, 29, 30, 31 | 0d |  |  |  | 后端开发工程师; 前端开发工程师; 数据库管理员 | 72h | 3,600 |  |
| 34 | 3.26 | 需求核验 | 2d | 2020-06-29 | 2020-06-30 | 33 | 0d |  |  |  | 测试工程师; 产品经理; 后端开发工程师; 前端开发工程师; 数据库管理员; 用户界面设计师; 用户研究员 | 112h | 5,120 |  |

| ID | WBS | Task | Duration | Start | Finish | Predecessors | Total slack | Constraint | Resources | Work | Cost | Baseline cost |
| --- | --- | --- | --- | --- | --- | --- | --- | --- | --- | --- | --- | --- |
| 35 | 4 | **项目测试阶段** | 30d | 2020-07-01 | 2020-08-11 | 8 | 0d |  |  | 456.8h | 73,600 | 100,000 |
| 36 | 4.1 | 单元测试 | 9d | 2020-07-01 | 2020-07-13 |  | 0d | start no earlier than 2020-07-01 | 测试工程师; 后端开发工程师 [90%]; 开发设备 | 129.6h | 6,760 |  |
| 37 | 4.2 | 集成测试 | 11d | 2020-07-14 | 2020-07-28 | 36 | 0d |  | 测试工程师; 后端开发工程师 [90%]; 开发设备 | 151.2h | 7,840 |  |
| 38 | 4.3 | 测试规格说明书撰写 | 10d | 2020-07-29 | 2020-08-11 | 37 | 0d |  | 测试工程师; 开发设备 | 80h | 4,200 |  |
| 39 | 4.4 | 系统使用说明书撰写 | 20d | 2020-07-01 | 2020-07-28 |  | 10d | start no earlier than 2020-07-01 | 后端开发工程师 [10%] | 16h | 800 |  |
| 40 | 4.5 | 界面设计方案最终版 | 5d | 2020-07-01 | 2020-07-07 |  | 25d |  | 用户界面设计师 | 40h | 1,600 |  |
| 41 | 4.6 | 数据库设计方案最终版 | 5d | 2020-07-01 | 2020-07-07 |  | 25d |  | 数据库管理员 | 40h | 2,400 |  |
| 42 | 5 | **项目验收阶段** | 24d? | 2020-08-12 | 2020-09-14 | 35 | 0d |  |  | 792h | 58,520 | 50,000 |
| 43 | 5.1 | 验收测试 | 13d | 2020-08-12 | 2020-08-28 |  | 0d |  | 测试工程师; 产品经理; 后端开发工程师; 前端开发工程师; 数据库管理员; 用户界面设计师 | 624h | 29,120 |  |
| 44 | 5.2 | 需求确认 | 3d | 2020-08-31 | 2020-09-02 | 43 | 0d |  | 产品经理 | 24h | 1,200 |  |
| 45 | 5.3 | 文档确认 | 3d | 2020-09-03 | 2020-09-07 | 44 | 0d |  | 产品经理 | 24h | 1,200 |  |
| 46 | 5.4 | 产品试运行 | 5d | 2020-09-08 | 2020-09-14 | 45 | 0d |  | 测试工程师; 后端开发工程师; 开发设备; 数据库管理员 | 120h | 7,000 |  |
| 47 | 5.5 | 产品验收完成 | 1d? | 2020-08-31 | 2020-08-31 |  | 0d | must finish on 2020-08-31 |  |  |  |  |
